# Proyecto_2_(Reduccion de coste del proyecto 1)

Schedule from MS Project, 2021-11-15 to 2022-01-14, costs in €.

## Calendars

- Calendario de Huelva: Mon-Fri 09:00-13:00, 15:00-19:00; Sat-Sun off. Exceptions (off unless hours are given): 2021-12-06 (Dia de la Constitución española), 2021-12-08 (Inmaculada Concepción), 2022-01-06 (Epifanía del Señor).

## Resources

| Resource | Rate | Cost per use |
| --- | --- | --- |
| Operario 1 | 35 |  |
| Operario 2 | 35 |  |
| Soporte | 11.5 |  |
| Lector de código | 36 |  |
| Torno | 1580 |  |
| Barreras/Pasillos metalicos | 850 |  |
| Dispositivos biométricos | 1240 |  |
| Ordenador Servidor | 3600 | 150 |
| Windows 2019 Server | 850 |  |
| Switch de 48 puertos | 1250 |  |
| Patch panel de 48 puertos | 220 |  |
| Armario de 24 unidades | 850 |  |
| Juan Perez | 29.15 |  |
| Javier Gutierrez | 29.15 |  |
| Sara Carbonero | 29.15 |  |
| Vicente Ruiz | 29.15 |  |
| Francisco Delgado | 22.83 |  |
| Desayuno Reunión | 250 |  |

## Schedule

| ID | WBS | Task | Duration | Start | Finish | Predecessors | Total slack | Free slack | Constraint | Resources | Work | Cost |
| --- | --- | --- | --- | --- | --- | --- | --- | --- | --- | --- | --- | --- |
| 1 | 1 | **TODO EL PROYECTO** | 41.15d | 2021-11-15 | 2022-01-14 |  | 0d |  |  |  | 1004h | 72,656.39 |
| 2 | 1.1 | **Reuniones (Miembros)** | 18.75d | 2021-11-29 | 2021-12-27 |  | 12.4d |  |  |  | 42h | 1,961.94 |
| 3 | 1.1.1 | Reuniones (Miembros) 1 | 2h | 2021-11-29 | 2021-11-29 |  | 30.9d |  | start no earlier than 2021-11-29 | Juan Perez; Francisco Delgado; Vicente Ruiz; Sara Carbonero; Desayuno Reunión | 8h | 470.56 |
| 4 | 1.1.2 | Reuniones (Miembros) 2 | 2h | 2021-12-13 | 2021-12-13 |  | 22.9d |  | start no earlier than 2021-12-13 | Vicente Ruiz; Francisco Delgado; Juan Perez; Sara Carbonero; Desayuno Reunión | 8h | 479.3 |
| 5 | 1.1.3 | Reuniones (Miembros) 3 | 2h | 2021-12-27 | 2021-12-27 |  | 12.9d |  | start no earlier than 2021-12-27 | Francisco Delgado; Juan Perez; Sara Carbonero; Vicente Ruiz; Desayuno Reunión | 8h | 483.89 |
| 6 | 1.1.4 | **Reuniones (Jefe de Proyecto)** | 18.75d | 2021-11-29 | 2021-12-27 |  | 12.4d |  |  |  | 18h | 528.2 |
| 7 | 1.1.4.1 | Reuniones (Jefe de Proyecto) 1 | 6h | 2021-11-29 | 2021-11-29 |  | 30.4d |  | start no earlier than 2021-11-29 | Javier Gutierrez | 6h | 174.9 |
| 8 | 1.1.4.2 | Reuniones (Jefe de Proyecto) 2 | 6h | 2021-12-13 | 2021-12-13 |  | 22.4d |  | start no earlier than 2021-12-13 | Javier Gutierrez | 6h | 174.9 |
| 9 | 1.1.4.3 | Reuniones (Jefe de Proyecto) 3 | 6h | 2021-12-27 | 2021-12-27 |  | 12.4d |  | start no earlier than 2021-12-27 | Javier Gutierrez | 6h | 178.4 |
| 10 | 1.2 | **1) Instalación de elementos de control en puestos** | 27d | 2021-11-15 | 2021-12-23 |  | 14.15d |  |  |  | 180h | 21,387.66 |
| 11 | 1.2.1 | Montaje de los soportes metálicos | 60h | 2021-11-15 | 2021-11-24 |  | 14.15d | 0d |  | Soporte [24000%]; Operario 1; Operario 2 | 120h | 6,960 |
| 12 | 1.2.2 | **Montaje de corriente** | 7d | 2021-11-25 | 2021-12-07 | 11FS+1ed | 25.65d |  |  |  |  | 1,250 |
| 13 | 1.2.2.1 | Instalar cables | 4d | 2021-11-25 | 2021-12-01 |  | 25.65d | 0d |  |  |  | 700 |
| 14 | 1.2.2.2 | Instalar puntos de corriente | 2d | 2021-12-01 | 2021-12-03 | 13 | 25.65d | 0d |  |  |  | 350 |
| 15 | 1.2.2.3 | Pruebas | 1d | 2021-12-03 | 2021-12-07 | 14 | 25.65d |  |  |  |  | 200 |
| 16 | 1.2.3 | **Montaje de red** | 11d | 2021-11-25 | 2021-12-14 | 11FS+1ed | 14.15d |  |  |  |  | 2,770 |
| 17 | 1.2.3.1 | Instalar canaletas | 2d | 2021-11-25 | 2021-11-29 |  | 14.15d | 0d |  |  |  | 220 |
| 18 | 1.2.3.2 | Instalar cables | 4d | 2021-11-29 | 2021-12-03 | 17 | 14.15d | 0d |  |  |  | 650 |
| 19 | 1.2.3.3 | Instalar tomas de red en puestos | 2d | 2021-12-03 | 2021-12-09 | 18 | 14.15d | 0d |  |  |  | 400 |
| 20 | 1.2.3.4 | Montaje del armario, acabado del armario, realización de pruebas y certificación de red | 3d | 2021-12-09 | 2021-12-14 | 19 | 14.15d | 0d |  | Armario de 24 unidades |  | 1,500 |
| 21 | 1.2.4 | Montaje del lector | 60h | 2021-12-14 | 2021-12-23 | 20 | 14.15d |  |  | Lector de código [24000%]; Juan Perez | 60h | 10,407.66 |
| 23 | 1.3 | **2) Instalación de los tornos de acceso** | 2.5d | 2021-12-14 | 2021-12-16 |  | 19.15d |  |  |  | 32h | 14,052.64 |
| 24 | 1.3.1 | Montaje de los tornos y barreras | 1.5d | 2021-12-14 | 2021-12-15 | 20 | 19.15d | 0d |  | Torno [300%]; Barreras/Pasillos metalicos; Operario 1; Operario 2 | 24h | 6,430 |
| 25 | 1.3.2 | Integración de los dispositivos faciales | 1d | 2021-12-16 | 2021-12-16 | 24 | 19.15d |  |  | Dispositivos biométricos [600%]; Francisco Delgado | 8h | 7,622.64 |

| ID | WBS | Task | Type | Duration | Start | Finish | Predecessors | Total slack | Resources | Work | Cost |
| --- | --- | --- | --- | --- | --- | --- | --- | --- | --- | --- | --- |
| 27 | 1.4 | **3) Instalación de infraestructura común de red y equipamiento informático** |  | 2d | 2021-12-14 | 2021-12-16 |  | 16.69d |  |  | 13,420 |
| 28 | 1.4.1 | Montaje del servidor |  | 2d | 2021-12-14 | 2021-12-16 | 20 | 16.69d | Ordenador Servidor; Windows 2019 Server; Switch de 48 puertos [600%]; Patch panel de 48 puertos [600%] |  | 13,420 |
| 30 | 1.5 | **4) Desarrollo de la aplicación informática** |  | 38.19d | 2021-11-15 | 2022-01-11 |  | 0d |  | 694h | 20,321.67 |
| 31 | 1.5.1 | 1. Definición del Sistema |  | 23.5h | 2021-11-15 | 2021-11-17 |  | 0d | Javier Gutierrez; Sara Carbonero; Vicente Ruiz; Juan Perez | 94h | 2,863.24 |
| 32 | 1.5.2 | 2. Establecimiento de requisitos |  | 42h | 2021-11-17 | 2021-11-25 | 31 | 0d | Vicente Ruiz | 42h | 1,224.3 |
| 33 | 1.5.3 | 3. Análisis de casos de uso |  | 38h | 2021-11-17 | 2021-11-24 | 31 | 0.5d | Juan Perez | 38h | 1,107.7 |
| 34 | 1.5.4 | 4. Análisis de clase |  | 26h | 2021-11-17 | 2021-11-23 | 31 | 2d | Sara Carbonero; Francisco Delgado | 52h | 2,241.72 |
| 35 | 1.5.5 | 5. Identificación de las interfaces de usuario |  | 28h | 2021-11-17 | 2021-11-23 | 31 | 1.75d | Javier Gutierrez | 28h | 962.92 |
| 36 | 1.5.6 | 6. Análisis de consistencia |  | 12h | 2021-11-25 | 2021-11-26 | 32, 33, 34, 35 | 0d | Javier Gutierrez; Juan Perez; Sara Carbonero | 36h | 1,112.28 |
| 37 | 1.5.7 | **7. Aprobación del análisis** |  | 2.75d | 2021-11-26 | 2021-12-01 | 36 | 0d |  | 28h | 856.94 |
| 38 | 1.5.7.1 | Parte Analista |  | 7h | 2021-11-26 | 2021-11-29 |  | 1.88d | Vicente Ruiz; Juan Perez | 14h | 408.1 |
| 39 | 1.5.7.2 | Parte Supervisor |  | 14h | 2021-11-26 | 2021-12-01 |  | 0d | Sara Carbonero | 14h | 448.84 |
| 40 | 1.5.8 | 8. Definición de la arquitectura del sistema |  | 8h | 2021-12-01 | 2021-12-02 | 37 | 0d | Sara Carbonero; Vicente Ruiz; Juan Perez; Javier Gutierrez | 32h | 1,009.68 |
| 41 | 1.5.9 | **9. Diseño de clases** |  | 4d | 2021-12-02 | 2021-12-10 | 40 | 0d |  | 48h | 1,298.08 |
| 42 | 1.5.9.1 | Parte Analista |  | 32h | 2021-12-02 | 2021-12-10 |  | 0d | Juan Perez | 32h | 932.8 |
| 43 | 1.5.9.2 | Parte Programador |  | 16h | 2021-12-02 | 2021-12-07 |  | 2d | Francisco Delgado | 16h | 365.28 |
| 44 | 1.5.10 | **10. Diseño de datos** |  | 4d | 2021-12-02 | 2021-12-10 | 40 | 0d |  | 64h | 1,772.94 |
| 45 | 1.5.10.1 | Parte Analista |  | 32h | 2021-12-02 | 2021-12-10 |  | 0d | Sara Carbonero | 32h | 932.8 |
| 46 | 1.5.10.2 | Parte Programador |  | 32h | 2021-12-02 | 2021-12-10 |  | 0d | Vicente Ruiz | 32h | 840.14 |
| 47 | 1.5.11 | **11. Verificación del diseño** |  | 2.25d | 2021-12-10 | 2021-12-14 | 41, 44 | 0d |  | 32h | 946.28 |
| 48 | 1.5.11.1 | Parte Analista |  | 4h | 2021-12-10 | 2021-12-10 |  | 1.75d | Juan Perez; Vicente Ruiz | 8h | 250.68 |
| 49 | 1.5.11.2 | Parte Programador |  | 8h | 2021-12-10 | 2021-12-13 |  | 1.25d | Francisco Delgado | 8h | 182.64 |
| 50 | 1.5.11.3 | Parte Supervisor |  | 16h | 2021-12-10 | 2021-12-14 |  | 0d | Sara Carbonero | 16h | 512.96 |
| 51 | 1.5.12 | (HITO) Finalización del diseño | milestone | 0d | 2021-12-14 | 2021-12-14 | 47 | 18.5d |  |  |  |
| 52 | 1.5.13 | 12. Codificación de las clases |  | 72h | 2021-12-14 | 2021-12-28 | 47 | 0d | Francisco Delgado | 72h | 1,668.19 |
| 53 | 1.5.14 | 13. Integración del sistema |  | 14h | 2021-12-28 | 2021-12-30 | 52 | 0d | Vicente Ruiz; Francisco Delgado | 28h | 700.93 |

| ID | WBS | Task | Type | Duration | Start | Finish | Predecessors | Total slack | Resources | Work | Cost |
| --- | --- | --- | --- | --- | --- | --- | --- | --- | --- | --- | --- |
| 54 | 1.5.15 | **14. Aprobación del sistema** |  | 2.25d | 2021-12-30 | 2022-01-03 | 53 | 0d |  | 36h | 954.35 |
| 55 | 1.5.15.1 | Parte Programador |  | 18h | 2021-12-30 | 2022-01-03 |  | 0d | Francisco Delgado | 18h | 419.16 |
| 56 | 1.5.15.2 | Parte Supervisor |  | 18h | 2021-12-30 | 2022-01-03 |  | 0d | Juan Perez | 18h | 535.19 |
| 57 | 1.5.16 | (HITO) Finalización de aprobación del sistema | milestone | 0d | 2022-01-03 | 2022-01-03 | 54 | 4.25d |  |  |  |
| 58 | 1.5.17 | 15. Ejecución de prueba unitarias |  | 19h | 2022-01-03 | 2022-01-07 | 54 | 0d | Francisco Delgado; Vicente Ruiz | 38h | 951.26 |
| 59 | 1.5.18 | 16. Ejecución de las pruebas de integración |  | 13h | 2022-01-07 | 2022-01-11 | 58 | 0d | Francisco Delgado; Vicente Ruiz | 26h | 650.86 |
| 61 | 1.6 | **5) Instalación de software y pruebas del sistema** |  | 2.96d | 2022-01-11 | 2022-01-14 |  | 0d |  | 56h | 1,512.48 |
| 62 | 1.6.1 | Instalación y configuración (Aplicación EPSSOFT) |  | 8.67h | 2022-01-11 | 2022-01-12 | 30, 27 | 0d | Francisco Delgado; Juan Perez; Sara Carbonero | 26h | 717.19 |
| 63 | 1.6.2 | Prueba Global del sistema |  | 15h | 2022-01-12 | 2022-01-14 | 62 | 0d | Francisco Delgado; Juan Perez | 30h | 795.29 |
