# Proyecto_2_(Reduccion de coste del proyecto 1)

Schedule from MS Project, 2021-11-15 to 2021-12-30, costs in €.

## Calendars

- Calendario de Huelva: Mon-Fri 09:00-13:00, 15:00-19:00; Sat-Sun off. Exceptions (off unless hours are given): 2021-12-06 (Dia de la Constitución española), 2021-12-08 (Inmaculada Concepción).

## Resources

| Resource | Rate | Cost per use |
| --- | --- | --- |
| Operario 1 | 35 |  |
| Operario 2 | 35 |  |
| Soporte | 11.5 |  |
| Lector de código | 36 |  |
| Torno | 1580 |  |
| Barreras/Pasillos metalicos | 850 |  |
| Dispositivos biométricos | 1240 |  |
| Ordenador Servidor | 3600 | 150 |
| Windows 2019 Server | 850 |  |
| Switch de 48 puertos | 1250 |  |
| Patch panel de 48 puertos | 220 |  |
| Armario de 24 unidades | 850 |  |
| Juan Perez | 29.15 |  |
| Javier Gutierrez | 29.15 |  |
| Sara Carbonero | 29.15 |  |
| Vicente Ruiz | 29.15 |  |
| Francisco Delgado | 22.83 |  |
| Desayuno Reunión | 250 |  |

## Schedule

| ID | WBS | Task | Duration | Start | Finish | Predecessors | Total slack | Free slack | Constraint | Resources | Work | Cost |
| --- | --- | --- | --- | --- | --- | --- | --- | --- | --- | --- | --- | --- |
| 1 | 1 | **TODO EL PROYECTO** | 31.22d | 2021-11-15 | 2021-12-30 |  | 0d |  |  |  | 1004h | 73,388.73 |
| 2 | 1.1 | **Reuniones (Miembros)** | 18.75d | 2021-11-29 | 2021-12-27 |  | 2.47d |  |  |  | 42h | 1,961.94 |
| 3 | 1.1.1 | Reuniones (Miembros) 1 | 2h | 2021-11-29 | 2021-11-29 |  | 20.97d |  | start no earlier than 2021-11-29 | Juan Perez; Francisco Delgado; Vicente Ruiz; Sara Carbonero; Desayuno Reunión | 8h | 470.56 |
| 4 | 1.1.2 | Reuniones (Miembros) 2 | 2h | 2021-12-13 | 2021-12-13 |  | 12.97d |  | start no earlier than 2021-12-13 | Vicente Ruiz; Francisco Delgado; Juan Perez; Sara Carbonero; Desayuno Reunión | 8h | 479.3 |
| 5 | 1.1.3 | Reuniones (Miembros) 3 | 2h | 2021-12-27 | 2021-12-27 |  | 2.97d |  | start no earlier than 2021-12-27 | Francisco Delgado; Juan Perez; Sara Carbonero; Vicente Ruiz; Desayuno Reunión | 8h | 483.89 |
| 6 | 1.1.4 | **Reuniones (Jefe de Proyecto)** | 18.75d | 2021-11-29 | 2021-12-27 |  | 2.47d | 0d |  |  | 18h | 528.2 |
| 7 | 1.1.4.1 | Reuniones (Jefe de Proyecto) 1 | 6h | 2021-11-29 | 2021-11-29 |  | 20.47d | 18d | start no earlier than 2021-11-29 | Javier Gutierrez | 6h | 174.9 |
| 8 | 1.1.4.2 | Reuniones (Jefe de Proyecto) 2 | 6h | 2021-12-13 | 2021-12-13 |  | 12.47d | 10d | start no earlier than 2021-12-13 | Javier Gutierrez | 6h | 174.9 |
| 9 | 1.1.4.3 | Reuniones (Jefe de Proyecto) 3 | 6h | 2021-12-27 | 2021-12-27 |  | 2.47d | 0d | start no earlier than 2021-12-27 | Javier Gutierrez | 6h | 178.4 |
| 10 | 1.2 | **1) Instalación de elementos de control en puestos** | 31.22d | 2021-11-15 | 2021-12-30 |  | 0d |  |  |  | 180h | 21,395.65 |
| 11 | 1.2.1 | Montaje de los soportes metálicos | 60h | 2021-11-15 | 2021-11-24 |  | 0d |  |  | Soporte [24000%]; Operario 1; Operario 2 | 120h | 6,960 |
| 12 | 1.2.2 | **Montaje de corriente** | 7d | 2021-11-25 | 2021-12-07 | 11FS+1ed | 15.72d |  |  |  |  | 1,250 |
| 13 | 1.2.2.1 | Instalar cables | 4d | 2021-11-25 | 2021-12-01 |  | 15.72d | 0d |  |  |  | 700 |
| 14 | 1.2.2.2 | Instalar puntos de corriente | 2d | 2021-12-01 | 2021-12-03 | 13 | 15.72d | 0d |  |  |  | 350 |
| 15 | 1.2.2.3 | Pruebas | 1d | 2021-12-03 | 2021-12-07 | 14 | 15.72d | 13.25d |  |  |  | 200 |
| 16 | 1.2.3 | **Montaje de red** | 11d | 2021-11-25 | 2021-12-14 | 11FS+1ed | 0d |  |  |  |  | 2,770 |
| 17 | 1.2.3.1 | Instalar canaletas | 2d | 2021-11-25 | 2021-11-29 |  | 0d |  |  |  |  | 220 |
| 18 | 1.2.3.2 | Instalar cables | 4d | 2021-11-29 | 2021-12-03 | 17 | 0d |  |  |  |  | 650 |
| 19 | 1.2.3.3 | Instalar tomas de red en puestos | 2d | 2021-12-03 | 2021-12-09 | 18 | 0d |  |  |  |  | 400 |
| 20 | 1.2.3.4 | Montaje del armario, acabado del armario, realización de pruebas y certificación de red | 3d | 2021-12-09 | 2021-12-14 | 19 | 0d |  |  | Armario de 24 unidades |  | 1,500 |
| 21 | 1.2.4 | Montaje del lector | 60h | 2021-12-14 | 2021-12-30 | 20 | 0d |  |  | Lector de código [24000%]; Juan Perez | 60h | 10,415.65 |
| 23 | 1.3 | **2) Instalación de los tornos de acceso** | 2.5d | 2021-12-14 | 2021-12-16 |  | 9.22d |  |  |  | 32h | 14,103.2 |
| 24 | 1.3.1 | Montaje de los tornos y barreras | 1.5d | 2021-12-14 | 2021-12-15 | 20 | 9.22d | 0d |  | Torno [300%]; Barreras/Pasillos metalicos; Operario 1; Operario 2 | 24h | 6,430 |
| 25 | 1.3.2 | Integración de los dispositivos faciales | 1d | 2021-12-16 | 2021-12-16 | 24 | 9.22d |  |  | Dispositivos biométricos [600%]; Sara Carbonero | 8h | 7,673.2 |

| ID | WBS | Task | Type | Duration | Start | Finish | Predecessors | Total slack | Free slack | Constraint | Resources | Work | Cost |
| --- | --- | --- | --- | --- | --- | --- | --- | --- | --- | --- | --- | --- | --- |
| 27 | 1.4 | **3) Instalación de infraestructura común de red y equipamiento informático** |  | 2d | 2021-12-14 | 2021-12-16 |  | 7.46d | 4.51d |  |  |  | 13,420 |
| 28 | 1.4.1 | Montaje del servidor |  | 2d | 2021-12-14 | 2021-12-16 | 20 | 7.46d |  |  | Ordenador Servidor; Windows 2019 Server; Switch de 48 puertos [600%]; Patch panel de 48 puertos [600%] |  | 13,420 |
| 30 | 1.5 | **4) Desarrollo de la aplicación informática** |  | 26.01d | 2021-11-15 | 2021-12-23 |  | 2.95d | 0d |  |  | 694h | 20,946.58 |
| 31 | 1.5.1 | 1. Definición del Sistema |  | 17.9h | 2021-11-15 | 2021-11-17 |  | 3.07d | 0d |  | Javier Gutierrez; Sara Carbonero; Vicente Ruiz; Juan Perez | 94h | 2,965.33 |
| 32 | 1.5.2 | 2. Establecimiento de requisitos |  | 32h | 2021-11-17 | 2021-11-23 | 31 | 3.07d | 0d |  | Vicente Ruiz | 42h | 1,259.2 |
| 33 | 1.5.3 | 3. Análisis de casos de uso |  | 28.95h | 2021-11-17 | 2021-11-22 | 31 | 3.45d | 0.38d |  | Juan Perez | 38h | 1,139.28 |
| 34 | 1.5.4 | 4. Análisis de clase |  | 26h | 2021-11-17 | 2021-11-22 | 31 | 3.82d | 0.75d |  | Sara Carbonero; Francisco Delgado | 52h | 2,241.72 |
| 35 | 1.5.5 | 5. Identificación de las interfaces de usuario |  | 28h | 2021-11-17 | 2021-11-22 | 31 | 3.57d | 0.5d |  | Javier Gutierrez | 28h | 962.92 |
| 36 | 1.5.6 | 6. Análisis de consistencia |  | 9.15h | 2021-11-23 | 2021-11-24 | 32, 33, 34, 35 | 3.07d | 0d |  | Javier Gutierrez; Juan Perez; Sara Carbonero | 36h | 1,154.29 |
| 37 | 1.5.7 | **7. Aprobación del análisis** |  | 1.75d | 2021-11-24 | 2021-11-26 | 36 | 3.07d | 0d |  |  | 28h | 856.94 |
| 38 | 1.5.7.1 | Parte Analista |  | 7h | 2021-11-24 | 2021-11-25 |  | 3.94d | 1.48d |  | Vicente Ruiz; Juan Perez | 14h | 408.1 |
| 39 | 1.5.7.2 | Parte Supervisor |  | 14h | 2021-11-24 | 2021-11-26 |  | 3.07d | 0.6d |  | Sara Carbonero | 14h | 448.84 |
| 40 | 1.5.8 | 8. Definición de la arquitectura del sistema |  | 8h | 2021-11-26 | 2021-11-30 | 37 | 3.07d | 0d |  | Sara Carbonero; Vicente Ruiz; Juan Perez; Javier Gutierrez | 32h | 974.72 |
| 41 | 1.5.9 | **9. Diseño de clases** |  | 3.05d | 2021-11-30 | 2021-12-03 | 40 | 3.07d | 0.12d |  |  | 48h | 1,324.67 |
| 42 | 1.5.9.1 | Parte Analista |  | 24.38h | 2021-11-30 | 2021-12-03 |  | 3.07d | 0.6d | start no earlier than 2021-11-29 | Juan Perez | 32h | 959.39 |
| 43 | 1.5.9.2 | Parte Programador |  | 16h | 2021-11-30 | 2021-12-02 |  | 4d | 1.53d |  | Francisco Delgado | 16h | 365.28 |
| 44 | 1.5.10 | **10. Diseño de datos** |  | 3.05d | 2021-11-30 | 2021-12-03 | 40 | 2.95d | 0d |  |  | 64h | 1,802.43 |
| 45 | 1.5.10.1 | Parte Analista |  | 24.38h | 2021-11-30 | 2021-12-03 |  | 2.95d | 0.48d |  | Sara Carbonero | 32h | 966.1 |
| 46 | 1.5.10.2 | Parte Programador |  | 24.38h | 2021-11-30 | 2021-12-03 |  | 2.95d | 0.48d |  | Vicente Ruiz | 32h | 836.33 |
| 47 | 1.5.11 | **11. Verificación del diseño** |  | 1.52d | 2021-12-03 | 2021-12-07 | 41, 44 | 2.95d | 0d |  |  | 32h | 964.33 |
| 48 | 1.5.11.1 | Parte Analista |  | 4h | 2021-12-03 | 2021-12-03 |  | 3.98d | 1.51d |  | Juan Perez; Vicente Ruiz | 8h | 250.68 |
| 49 | 1.5.11.2 | Parte Programador |  | 8h | 2021-12-03 | 2021-12-07 |  | 3.48d | 1.01d |  | Francisco Delgado | 8h | 182.64 |
| 50 | 1.5.11.3 | Parte Supervisor |  | 12.2h | 2021-12-03 | 2021-12-07 |  | 2.95d | 0.48d |  | Sara Carbonero | 16h | 531.01 |
| 51 | 1.5.12 | (HITO) Finalización del diseño | milestone | 0d | 2021-12-07 | 2021-12-07 | 47 | 13.14d | 10.67d |  |  |  |  |
| 52 | 1.5.13 | 12. Codificación de las clases |  | 27.43h | 2021-12-07 | 2021-12-14 | 47 | 2.95d | 0d |  | Francisco Delgado; Vicente Ruiz | 72h | 1,995.61 |
| 53 | 1.5.14 | 13. Integración del sistema |  | 14h | 2021-12-14 | 2021-12-16 | 52 | 2.95d | 0d |  | Vicente Ruiz; Francisco Delgado | 28h | 687.18 |

| ID | WBS | Task | Type | Duration | Start | Finish | Predecessors | Total slack | Free slack | Resources | Work | Cost |
| --- | --- | --- | --- | --- | --- | --- | --- | --- | --- | --- | --- | --- |
| 54 | 1.5.15 | **14. Aprobación del sistema** |  | 1.72d | 2021-12-16 | 2021-12-17 | 53 | 2.95d | 0d |  | 36h | 965.21 |
| 55 | 1.5.15.1 | Parte Programador |  | 13.72h | 2021-12-16 | 2021-12-17 |  | 2.95d | 0.48d | Francisco Delgado | 18h | 425.58 |
| 56 | 1.5.15.2 | Parte Supervisor |  | 13.72h | 2021-12-16 | 2021-12-17 |  | 2.95d | 0.48d | Juan Perez | 18h | 539.64 |
| 57 | 1.5.16 | (HITO) Finalización de aprobación del sistema | milestone | 0d | 2021-12-17 | 2021-12-17 | 54 | 6d | 3.53d |  |  |  |
| 58 | 1.5.17 | 15. Ejecución de prueba unitarias |  | 14.48h | 2021-12-17 | 2021-12-21 | 54 | 2.95d | 0d | Francisco Delgado; Vicente Ruiz | 38h | 981.14 |
| 59 | 1.5.18 | 16. Ejecución de las pruebas de integración |  | 9.9h | 2021-12-21 | 2021-12-23 | 58 | 2.95d | 0.48d | Francisco Delgado; Vicente Ruiz | 26h | 671.6 |
| 61 | 1.6 | **5) Instalación de software y pruebas del sistema** |  | 2.25d | 2021-12-23 | 2021-12-27 |  | 2.95d |  |  | 56h | 1,561.35 |
| 62 | 1.6.1 | Instalación y configuración (Aplicación EPSSOFT) |  | 6.61h | 2021-12-23 | 2021-12-23 | 30, 27 | 2.95d | 0d | Francisco Delgado; Juan Perez; Sara Carbonero | 26h | 740.89 |
| 63 | 1.6.2 | Prueba Global del sistema |  | 11.43h | 2021-12-23 | 2021-12-27 | 62 | 2.95d | 0.48d | Francisco Delgado; Juan Perez | 30h | 820.46 |
