# Proyecto_4_(Sin Horas extra y con Serafin)

Schedule from MS Project, 2021-11-15 to 2021-12-29, costs in €.

## Calendars

- Calendario de Huelva: Mon-Fri 09:00-13:00, 15:00-19:00; Sat-Sun off. Exceptions (off unless hours are given): 2021-12-06 (Dia de la Constitución española), 2021-12-08 (Inmaculada Concepción).

## Resources

| Resource | Rate | Cost per use |
| --- | --- | --- |
| Operario 1 | 35 |  |
| Operario 2 | 35 |  |
| Soporte | 11.5 |  |
| Lector de código | 36 |  |
| Torno | 1580 |  |
| Barreras/Pasillos metalicos | 850 |  |
| Dispositivos biométricos | 1240 |  |
| Ordenador Servidor | 3600 | 150 |
| Windows 2019 Server | 850 |  |
| Switch de 48 puertos | 1250 |  |
| Patch panel de 48 puertos | 220 |  |
| Armario de 24 unidades | 850 |  |
| Juan Perez | 29.15 |  |
| Javier Gutierrez | 29.15 |  |
| Sara Carbonero | 29.15 |  |
| Vicente Ruiz | 29.15 |  |
| Francisco Delgado | 22.83 |  |
| Desayuno Reunión | 250 |  |
| Serafin Feria | 22.83 |  |

## Schedule

| ID | WBS | Task | Duration | Start | Finish | Predecessors | Total slack | Free slack | Constraint | Resources | Work | Cost |
| --- | --- | --- | --- | --- | --- | --- | --- | --- | --- | --- | --- | --- |
| 1 | 1 | **TODO EL PROYECTO** | 30.31d | 2021-11-15 | 2021-12-29 |  | 0d |  |  |  | 1010h | 73,857.36 |
| 2 | 1.1 | **Reuniones (Miembros)** | 18.75d | 2021-11-29 | 2021-12-27 |  | 1.56d |  |  |  | 48h | 2,099.84 |
| 3 | 1.1.1 | Reuniones (Miembros) 1 | 2h | 2021-11-29 | 2021-11-29 |  | 20.06d |  | start no earlier than 2021-11-29 | Juan Perez; Francisco Delgado; Vicente Ruiz; Sara Carbonero; Desayuno Reunión; Serafin Feria | 10h | 516.22 |
| 4 | 1.1.2 | Reuniones (Miembros) 2 | 2h | 2021-12-13 | 2021-12-13 |  | 12.06d |  | start no earlier than 2021-12-13 | Vicente Ruiz; Francisco Delgado; Juan Perez; Sara Carbonero; Desayuno Reunión; Serafin Feria | 10h | 524.96 |
| 5 | 1.1.3 | Reuniones (Miembros) 3 | 2h | 2021-12-27 | 2021-12-27 |  | 2.06d |  | start no earlier than 2021-12-27 | Francisco Delgado; Juan Perez; Sara Carbonero; Vicente Ruiz; Desayuno Reunión; Serafin Feria | 10h | 530.46 |
| 6 | 1.1.4 | **Reuniones (Jefe de Proyecto)** | 18.75d | 2021-11-29 | 2021-12-27 |  | 1.56d |  |  |  | 18h | 528.2 |
| 7 | 1.1.4.1 | Reuniones (Jefe de Proyecto) 1 | 6h | 2021-11-29 | 2021-11-29 |  | 19.56d |  | start no earlier than 2021-11-29 | Javier Gutierrez | 6h | 174.9 |
| 8 | 1.1.4.2 | Reuniones (Jefe de Proyecto) 2 | 6h | 2021-12-13 | 2021-12-13 |  | 11.56d |  | start no earlier than 2021-12-13 | Javier Gutierrez | 6h | 174.9 |
| 9 | 1.1.4.3 | Reuniones (Jefe de Proyecto) 3 | 6h | 2021-12-27 | 2021-12-27 |  | 1.56d |  | start no earlier than 2021-12-27 | Javier Gutierrez | 6h | 178.4 |
| 10 | 1.2 | **1) Instalación de elementos de control en puestos** | 25.5d | 2021-11-15 | 2021-12-22 |  | 4.81d |  |  |  | 180h | 21,531.37 |
| 11 | 1.2.1 | Montaje de los soportes metálicos | 60h | 2021-11-15 | 2021-11-24 |  | 4.81d | 0d |  | Soporte [24000%]; Operario 1; Operario 2 | 120h | 6,960 |
| 12 | 1.2.2 | **Montaje de corriente** | 7d | 2021-11-25 | 2021-12-07 | 11FS+1ed | 14.81d |  |  |  |  | 1,250 |
| 13 | 1.2.2.1 | Instalar cables | 4d | 2021-11-25 | 2021-12-01 |  | 14.81d | 0d |  |  |  | 700 |
| 14 | 1.2.2.2 | Instalar puntos de corriente | 2d | 2021-12-01 | 2021-12-03 | 13 | 14.81d | 0d |  |  |  | 350 |
| 15 | 1.2.2.3 | Pruebas | 1d | 2021-12-03 | 2021-12-07 | 14 | 14.81d |  |  |  |  | 200 |
| 16 | 1.2.3 | **Montaje de red** | 11d | 2021-11-25 | 2021-12-14 | 11FS+1ed | 4.81d |  |  |  |  | 2,770 |
| 17 | 1.2.3.1 | Instalar canaletas | 2d | 2021-11-25 | 2021-11-29 |  | 4.81d | 0d |  |  |  | 220 |
| 18 | 1.2.3.2 | Instalar cables | 4d | 2021-11-29 | 2021-12-03 | 17 | 4.81d | 0d |  |  |  | 650 |
| 19 | 1.2.3.3 | Instalar tomas de red en puestos | 2d | 2021-12-03 | 2021-12-09 | 18 | 4.81d | 0d |  |  |  | 400 |
| 20 | 1.2.3.4 | Montaje del armario, acabado del armario, realización de pruebas y certificación de red | 3d | 2021-12-09 | 2021-12-14 | 19 | 4.81d | 0d |  | Armario de 24 unidades |  | 1,500 |
| 21 | 1.2.4 | Montaje del lector | 36.5h | 2021-12-14 | 2021-12-22 | 20 | 4.81d |  |  | Lector de código [24000%]; Juan Perez; Javier Gutierrez | 60h | 10,551.37 |
| 23 | 1.3 | **2) Instalación de los tornos de acceso** | 2.5d | 2021-12-14 | 2021-12-16 |  | 8.31d |  |  |  | 32h | 14,052.64 |
| 24 | 1.3.1 | Montaje de los tornos y barreras | 1.5d | 2021-12-14 | 2021-12-15 | 20 | 8.31d | 0d |  | Torno [300%]; Barreras/Pasillos metalicos; Operario 1; Operario 2 | 24h | 6,430 |
| 25 | 1.3.2 | Integración de los dispositivos faciales | 1d | 2021-12-16 | 2021-12-16 | 24 | 8.31d |  |  | Dispositivos biométricos [600%]; Francisco Delgado | 8h | 7,622.64 |

| ID | WBS | Task | Type | Duration | Start | Finish | Predecessors | Total slack | Resources | Work | Cost |
| --- | --- | --- | --- | --- | --- | --- | --- | --- | --- | --- | --- |
| 27 | 1.4 | **3) Instalación de infraestructura común de red y equipamiento informático** |  | 2d | 2021-12-14 | 2021-12-16 |  | 5.75d |  |  | 13,420 |
| 28 | 1.4.1 | Montaje del servidor |  | 2d | 2021-12-14 | 2021-12-16 | 20 | 5.75d | Ordenador Servidor; Windows 2019 Server; Switch de 48 puertos [600%]; Patch panel de 48 puertos [600%] |  | 13,420 |
| 30 | 1.5 | **4) Desarrollo de la aplicación informática** |  | 27.25d | 2021-11-15 | 2021-12-24 |  | 0d |  | 694h | 21,301.2 |
| 31 | 1.5.1 | 1. Definición del Sistema |  | 23.5h | 2021-11-15 | 2021-11-17 |  | 0d | Javier Gutierrez; Sara Carbonero; Vicente Ruiz; Juan Perez | 94h | 2,863.24 |
| 32 | 1.5.2 | 2. Establecimiento de requisitos |  | 21h | 2021-11-17 | 2021-11-22 | 31 | 2.12d | Vicente Ruiz; Serafin Feria | 42h | 1,810.62 |
| 33 | 1.5.3 | 3. Análisis de casos de uso |  | 38h | 2021-11-17 | 2021-11-24 | 31 | 0d | Juan Perez | 38h | 1,107.7 |
| 34 | 1.5.4 | 4. Análisis de clase |  | 26h | 2021-11-17 | 2021-11-23 | 31 | 1.5d | Sara Carbonero; Francisco Delgado | 52h | 2,241.72 |
| 35 | 1.5.5 | 5. Identificación de las interfaces de usuario |  | 28h | 2021-11-17 | 2021-11-23 | 31 | 1.25d | Javier Gutierrez | 28h | 962.92 |
| 36 | 1.5.6 | 6. Análisis de consistencia |  | 9h | 2021-11-24 | 2021-11-25 | 32, 33, 34, 35 | 0d | Javier Gutierrez; Juan Perez; Sara Carbonero; Serafin Feria | 36h | 1,347.84 |
| 37 | 1.5.7 | **7. Aprobación del análisis** |  | 0.88d | 2021-11-25 | 2021-11-26 | 36 | 0d |  | 28h | 1,032.01 |
| 38 | 1.5.7.1 | Parte Analista |  | 7h | 2021-11-25 | 2021-11-26 |  | 0d | Vicente Ruiz; Serafin Feria | 14h | 603.54 |
| 39 | 1.5.7.2 | Parte Supervisor |  | 7h | 2021-11-25 | 2021-11-26 |  | 0d | Sara Carbonero; Juan Perez | 14h | 428.47 |
| 40 | 1.5.8 | 8. Definición de la arquitectura del sistema |  | 8h | 2021-11-26 | 2021-11-30 | 37 | 0d | Sara Carbonero; Vicente Ruiz; Juan Perez; Javier Gutierrez | 32h | 974.72 |
| 41 | 1.5.9 | **9. Diseño de clases** |  | 4d | 2021-11-30 | 2021-12-07 | 40 | 0d |  | 48h | 1,298.08 |
| 42 | 1.5.9.1 | Parte Analista |  | 32h | 2021-11-30 | 2021-12-07 |  | 0d | Juan Perez | 32h | 932.8 |
| 43 | 1.5.9.2 | Parte Programador |  | 16h | 2021-11-30 | 2021-12-02 |  | 2d | Francisco Delgado | 16h | 365.28 |
| 44 | 1.5.10 | **10. Diseño de datos** |  | 4d | 2021-11-30 | 2021-12-07 | 40 | 0d |  | 64h | 1,764.38 |
| 45 | 1.5.10.1 | Parte Analista |  | 32h | 2021-11-30 | 2021-12-07 |  | 0d | Sara Carbonero | 32h | 932.8 |
| 46 | 1.5.10.2 | Parte Programador |  | 32h | 2021-11-30 | 2021-12-07 |  | 0d | Vicente Ruiz | 32h | 831.58 |
| 47 | 1.5.11 | **11. Verificación del diseño** |  | 2d | 2021-12-07 | 2021-12-10 | 41, 44 | 0d |  | 32h | 946.28 |
| 48 | 1.5.11.1 | Parte Analista |  | 4h | 2021-12-07 | 2021-12-09 |  | 1.5d | Juan Perez; Vicente Ruiz | 8h | 250.68 |
| 49 | 1.5.11.2 | Parte Programador |  | 8h | 2021-12-07 | 2021-12-09 |  | 1d | Francisco Delgado | 8h | 182.64 |
| 50 | 1.5.11.3 | Parte Supervisor |  | 16h | 2021-12-07 | 2021-12-10 |  | 0d | Sara Carbonero | 16h | 512.96 |
| 51 | 1.5.12 | (HITO) Finalización del diseño | milestone | 0d | 2021-12-10 | 2021-12-10 | 47 | 9.56d |  |  |  |
| 52 | 1.5.13 | 12. Codificación de las clases |  | 24h | 2021-12-10 | 2021-12-15 | 47 | 0d | Francisco Delgado; Serafin Feria; Vicente Ruiz | 72h | 1,725.95 |
| 53 | 1.5.14 | 13. Integración del sistema |  | 15.84h | 2021-12-15 | 2021-12-17 | 52 | 0d | Vicente Ruiz; Francisco Delgado; Serafin Feria | 28h | 666.09 |

| ID | WBS | Task | Type | Duration | Start | Finish | Predecessors | Total slack | Resources | Work | Cost |
| --- | --- | --- | --- | --- | --- | --- | --- | --- | --- | --- | --- |
| 54 | 1.5.15 | **14. Aprobación del sistema** |  | 1.12d | 2021-12-17 | 2021-12-21 | 53 | 0d |  | 36h | 979.66 |
| 55 | 1.5.15.1 | Parte Programador |  | 9h | 2021-12-17 | 2021-12-21 |  | 0d | Francisco Delgado; Serafin Feria | 18h | 418.56 |
| 56 | 1.5.15.2 | Parte Supervisor |  | 9h | 2021-12-17 | 2021-12-21 |  | 0d | Juan Perez; Sara Carbonero | 18h | 561.1 |
| 57 | 1.5.16 | (HITO) Finalización de aprobación del sistema | milestone | 0d | 2021-12-21 | 2021-12-21 | 54 | 3.21d |  |  |  |
| 58 | 1.5.17 | 15. Ejecución de prueba unitarias |  | 12.67h | 2021-12-21 | 2021-12-22 | 54 | 0d | Francisco Delgado; Vicente Ruiz; Serafin Feria | 38h | 929.14 |
| 59 | 1.5.18 | 16. Ejecución de las pruebas de integración |  | 13h | 2021-12-22 | 2021-12-24 | 58 | 0d | Francisco Delgado; Vicente Ruiz | 26h | 650.86 |
| 61 | 1.6 | **5) Instalación de software y pruebas del sistema** |  | 3.06d | 2021-12-24 | 2021-12-29 |  | 0d |  | 56h | 1,452.32 |
| 62 | 1.6.1 | Instalación y configuración (Aplicación EPSSOFT) |  | 6.5h | 2021-12-24 | 2021-12-28 | 30, 27 | 0d | Francisco Delgado; Juan Perez; Sara Carbonero; Serafin Feria | 26h | 689.25 |
| 63 | 1.6.2 | Prueba Global del sistema |  | 10h | 2021-12-28 | 2021-12-29 | 62 | 0d | Francisco Delgado; Juan Perez; Serafin Feria | 30h | 763.06 |
