# Proyecto_1(Sin horas extra)

Schedule from MS Project, 2021-11-11 to 2022-01-11, costs in €.

## Calendars

- ETSI: Mon-Fri 09:00-13:00, 15:00-19:00; Sat-Sun off. Exceptions (off unless hours are given): 2021-12-06 (Día de la Constitución), 2021-12-08 (Día de la Inmaculada), 2021-12-24 to 2022-01-06 (Navidad).

## Resources

| Resource | Rate |
| --- | --- |
| JefeA | 41.98 |
| AnalistaW | 32.56 |
| AnalistaD | 29.6 |
| AnalistaP | 26.64 |
| Administrativo | 19.76 |
| ProgramadorJr | 16.22 |

## Schedule

| ID | WBS | Task | Duration | Start | Finish | Predecessors | Total slack | Free slack | Resources | Work | Cost |
| --- | --- | --- | --- | --- | --- | --- | --- | --- | --- | --- | --- |
| 1 | 1 | **TODO EL PROYECTO** | 31.03d | 2021-11-11 | 2022-01-11 |  | 0d |  |  | 1112h | 31,570.96 |
| 2 | 1.1 | **1. Requerimientos de los usuarios** | 3.5d | 2021-11-11 | 2021-11-16 |  | 0d |  |  | 48h | 1,826.64 |
| 3 | 1.1.1 | Toma de requisistos de usuario | 2.5d | 2021-11-11 | 2021-11-15 |  | 0d |  | JefeA; AnalistaW | 40h | 1,490.8 |
| 4 | 1.1.2 | Validación de los requisitos | 1d | 2021-11-15 | 2021-11-16 | 3 | 0d |  | JefeA | 8h | 335.84 |
| 5 | 1.2 | **2. Análisis de requisitos de Software** | 7.5d | 2021-11-11 | 2021-11-22 |  | 1d |  |  | 144h | 4,147.36 |
| 6 | 1.2.1 | Estudio de los requisitos | 3d | 2021-11-11 | 2021-11-15 |  | 1d | 0d | AnalistaD; AnalistaP | 48h | 1,349.76 |
| 7 | 1.2.2 | Validación de los requisitos | 1d | 2021-11-16 | 2021-11-17 | 6 | 1d | 0d | JefeA | 8h | 335.84 |
| 8 | 1.2.3 | Instalación del Software en los PCs | 2d | 2021-11-17 | 2021-11-19 | 7 | 1d | 0d | ProgramadorJr; AnalistaD | 32h | 733.12 |
| 9 | 1.2.4 | Preparación de los puestos de trabajo | 1d | 2021-11-19 | 2021-11-22 | 8 | 1d |  | AnalistaP; AnalistaD | 16h | 449.92 |
| 10 | 1.2.5 | Preparación del servidor de desarrollo | 4d | 2021-11-16 | 2021-11-19 | 6 | 1.5d |  | AnalistaW | 32h | 1,041.92 |
| 11 | 1.2.6 | Preparación del servidor de preexplotación | 1d | 2021-11-16 | 2021-11-16 | 6 | 4.5d |  | AnalistaD | 8h | 236.8 |
| 12 | 1.3 | **3.Análisis de requisistos del Sistema** | 5d | 2021-11-16 | 2021-11-23 |  | 0d |  |  | 48h | 1,234.72 |
| 13 | 1.3.1 | Estimación de hardware necesario | 24h | 2021-11-16 | 2021-11-19 | 4 | 0d |  | AnalistaP | 24h | 639.36 |
| 14 | 1.3.2 | **Validación de hardware necesario** | 2d | 2021-11-19 | 2021-11-23 |  | 0d |  |  | 24h | 595.36 |
| 15 | 1.3.2.1 | Parte Tecnico | 16h | 2021-11-19 | 2021-11-23 | 13 | 0d |  | ProgramadorJr | 16h | 259.52 |
| 16 | 1.3.2.2 | Parte Jefe de Proyecto | 8h | 2021-11-19 | 2021-11-22 | 13 | 1d |  | JefeA | 8h | 335.84 |
| 17 | 1.4 | **4. Diseño Preliminar** | 20.03d | 2021-11-23 | 2021-12-23 |  | 0d |  |  | 112h | 4,008.48 |
| 18 | 1.4.1 | Diseño de los datos y procesos | 6d | 2021-11-23 | 2021-12-01 | 2, 5, 12 | 0d |  | JefeA; AnalistaD | 96h | 3,435.84 |
| 19 | 1.4.2 | **Diseño del plan de pruebas** | 3.33d | 2021-12-20 | 2021-12-23 |  | 2.5d |  |  | 16h | 572.64 |
| 20 | 1.4.2.1 | Parte Datos | 1d | 2021-12-22 | 2021-12-23 | 18 | 2.5d |  | AnalistaD | 8h | 236.8 |
| 21 | 1.4.2.2 | Parte Jefe de Proyecto | 1d | 2021-12-20 | 2021-12-21 | 18 | 4.83d |  | JefeA | 8h | 335.84 |
| 22 | 1.5 | **5. Diseño Detallado** | 12.33d | 2021-12-09 | 2022-01-11 |  | 0d |  |  | 136h | 3,777.52 |
| 23 | 1.5.1 | Diseño gráfico de la aplcación | 5d | 2021-12-09 | 2021-12-21 | 18 | 5d |  | AnalistaW | 40h | 1,302.4 |
| 24 | 1.5.2 | **Diseño Técnico de componentes** | 11.33d | 2021-12-10 | 2022-01-11 |  | 0d |  |  | 96h | 2,475.12 |
| 25 | 1.5.2.1 | Presentación | 1d | 2021-12-21 | 2021-12-22 | 18 | 4d |  | AnalistaW | 8h | 260.48 |
| 26 | 1.5.2.2 | Mantenimiento de Explotación Agrícola | 2d | 2021-12-16 | 2021-12-20 | 18 | 5.83d |  | JefeA | 16h | 671.68 |
| 27 | 1.5.2.3 | Mantenimiento de Historial, Reservas, … | 4d | 2021-12-20 | 2022-01-07 | 18 | 1.5d |  | AnalistaP; ProgramadorJr | 32h | 685.76 |
| 28 | 1.5.2.4 | Localización | 4d | 2021-12-10 | 2022-01-11 | 18 | 0d |  | ProgramadorJr; AnalistaP | 40h | 857.2 |

| ID | WBS | Task | Type | Duration | Start | Finish | Predecessors | Total slack | Free slack | Resources | Work | Cost |
| --- | --- | --- | --- | --- | --- | --- | --- | --- | --- | --- | --- | --- |
| 29 | 1.6 | **6. Diseño de la Base de Datos** |  | 3.5d | 2021-12-13 | 2021-12-17 |  | 0.83d |  |  | 48h | 1,668.4 |
| 30 | 1.6.1 | Diseño de las Tablas y Relaciones |  | 1.5d | 2021-12-13 | 2021-12-15 | 18 | 0.83d | 0d | AnalistaD; JefeA | 24h | 858.96 |
| 31 | 1.6.2 | **Validación del diseño de la BD** |  | 2d | 2021-12-15 | 2021-12-17 |  | 0.83d | 0d |  | 24h | 809.44 |
| 32 | 1.6.2.1 | Parte Datos |  | 2d | 2021-12-15 | 2021-12-17 | 30 | 0.83d |  | AnalistaD | 16h | 473.6 |
| 33 | 1.6.2.2 | Parte Jefe de Proyecto |  | 1d | 2021-12-15 | 2021-12-16 | 30 | 1.83d |  | JefeA | 8h | 335.84 |
| 34 | 1.7 | **7. Construcción** |  | 19.03d | 2021-11-29 | 2022-01-11 |  | 0d |  |  | 312h | 8,775.44 |
| 35 | 1.7.1 | Construcción del Prototipo |  | 1.5d | 2021-11-29 | 2021-12-10 | 18SS+5ed | 11.33d |  | ProgramadorJr; AnalistaP | 24h | 514.32 |
| 36 | 1.7.2 | **Construcción de la BD** |  | 6.83d | 2021-12-17 | 2022-01-11 | 31 | 0d |  |  | 40h | 969.92 |
| 37 | 1.7.2.1 | Parte Datos |  | 3d | 2021-12-17 | 2022-01-10 |  | 0.83d |  | AnalistaD | 24h | 710.4 |
| 38 | 1.7.2.2 | Parte Programador |  | 2d | 2022-01-07 | 2022-01-11 |  | 0d |  | ProgramadorJr | 16h | 259.52 |
| 39 | 1.7.3 | Codificación |  | 8.2d | 2021-11-29 | 2021-12-13 | 18FS-2ed | 1.8d | 0d | ProgramadorJr; AnalistaP; AnalistaD; AnalistaW; JefeA | 248h | 7,291.2 |
| 40 | 1.8 | **8. Pruebas** |  | 4.83d | 2021-12-13 | 2021-12-20 |  | 1.8d |  |  | 96h | 2,265.04 |
| 41 | 1.8.1 | Pruebas Unitarias |  | 1.5d | 2021-12-13 | 2021-12-15 | 39 | 1.8d | 0d | ProgramadorJr; AnalistaP | 24h | 514.32 |
| 42 | 1.8.2 | Pruebas de Integración |  | 1d | 2021-12-15 | 2021-12-16 | 41 | 1.8d | 0d | ProgramadorJr; AnalistaP | 16h | 342.88 |
| 43 | 1.8.3 | Pruebas de Sistema |  | 2.33d | 2021-12-16 | 2021-12-20 | 42 | 2.5d | 0d | ProgramadorJr; AnalistaP; AnalistaW | 56h | 1,407.84 |
| 44 | 1.9 | **9. Demostración a los usuarios** |  | 3d | 2021-12-20 | 2021-12-23 |  | 2.5d |  |  | 48h | 1,496.16 |
| 45 | 1.9.1 | Entrenamiento de usuarios |  | 16h | 2021-12-20 | 2021-12-22 | 43 | 2.5d | 0d | AnalistaD; AnalistaP | 32h | 899.84 |
| 46 | 1.9.2 | **Validación del producto por los usuarios** |  | 1d | 2021-12-22 | 2021-12-23 | 45 | 2.5d | 0d |  | 16h | 596.32 |
| 47 | 1.9.2.1 | Parte Jefe de Proyecto |  | 1d | 2021-12-22 | 2021-12-23 |  | 2.5d |  | JefeA | 8h | 335.84 |
| 48 | 1.9.2.2 | Parte Analista |  | 1d | 2021-12-22 | 2021-12-23 |  | 2.5d |  | AnalistaW | 8h | 260.48 |
| 49 | 1.10 | **10. Documentación** |  | 19.3d | 2021-11-25 | 2022-01-07 |  | 1.03d |  |  | 120h | 2,371.2 |
| 50 | 1.10.1 | Documentación técnica del proyecto |  | 10d | 2021-11-25 | 2021-12-13 | 39FF | 10.33d |  | Administrativo | 80h | 1,580.8 |
| 51 | 1.10.2 | Documentación de usuarios |  | 5d | 2021-12-20 | 2022-01-07 | 42FS+3ed | 1.03d |  | Administrativo | 40h | 790.4 |
| 54 | 1.11 | (HITO) Entrega del diseño de la aplicación | milestone | 0d | 2022-01-11 | 2022-01-11 | 17, 22, 29 | 0d |  |  |  |  |
| 55 | 1.12 | (HITO) Aceptación del Producto por parte del cliente | milestone | 0d | 2021-12-23 | 2021-12-23 | 46 | 2.5d |  |  |  |  |
