# Proyecto_3 (Aplicando Horas extras)

Schedule from MS Project, 2021-11-11 to 2022-01-14, costs in €, A marks actual dates.

## Calendars

- ETSI: Mon-Fri 09:00-13:00, 15:00-19:00; Sat-Sun off. Exceptions (off unless hours are given): 2021-12-06 (Día de la Constitución), 2021-12-08 (Día de la Inmaculada), 2021-12-24 to 2022-01-06 (Navidad).

## Resources

| Resource | Rate |
| --- | --- |
| JefeA | 41.98 |
| AnalistaW | 32.56 |
| AnalistaD | 29.6 |
| AnalistaP | 26.64 |
| Administrativo | 19.76 |
| ProgramadorJr | 16.22 |

## Schedule

| ID | WBS | Task | Duration | Start | Finish | Predecessors | Complete | Remaining | Baseline start | Baseline finish | Baseline duration | Total slack | Resources | Work | Actual work | Cost | Baseline cost | Actual cost |
| --- | --- | --- | --- | --- | --- | --- | --- | --- | --- | --- | --- | --- | --- | --- | --- | --- | --- | --- |
| 1 | 1 | **TODO EL PROYECTO** | 34.48d | 2021-11-11 A | 2022-01-14 |  | 31% | 23.7d | 2021-11-11 | 2022-01-11 | 31.03d | 0d |  | 1232h | 312h | 36,664.3 | 31,570.96 | 9,921.01 |
| 2 | 1.1 | **1. Requerimientos de los usuarios** | 3.5d | 2021-11-11 A | 2021-11-16 A |  | 100% |  | 2021-11-11 | 2021-11-16 | 3.5d |  |  | 48h | 48h | 1,826.64 | 1,826.64 | 1,826.64 |
| 3 | 1.1.1 | Toma de requisistos de usuario | 2.5d | 2021-11-11 A | 2021-11-15 A |  | 100% |  | 2021-11-11 | 2021-11-15 | 2.5d |  | JefeA; AnalistaW | 40h | 40h | 1,490.8 | 1,490.8 | 1,490.8 |
| 4 | 1.1.2 | Validación de los requisitos | 1d | 2021-11-15 A | 2021-11-16 A | 3 | 100% |  | 2021-11-15 | 2021-11-16 | 1d |  | JefeA | 8h | 8h | 335.84 | 335.84 | 335.84 |
| 5 | 1.2 | **2. Análisis de requisitos de Software** | 15d | 2021-11-11 A | 2021-12-01 |  | 85% | 2.31d | 2021-11-11 | 2021-11-22 | 7.5d | 0d |  | 264h | 216h | 8,347.36 | 4,147.36 | 6,859.65 |
| 6 | 1.2.1 | Estudio de los requisitos | 3d | 2021-11-11 A | 2021-11-15 A |  | 100% |  | 2021-11-11 | 2021-11-15 | 3d |  | AnalistaD; AnalistaP | 48h | 48h | 1,349.76 | 1,349.76 | 1,349.76 |
| 7 | 1.2.2 | Validación de los requisitos | 1d | 2021-11-16 A | 2021-11-17 A | 6 | 100% |  | 2021-11-16 | 2021-11-17 | 1d |  | JefeA | 8h | 8h | 335.84 | 335.84 | 335.84 |
| 8 | 1.2.3 | Instalación del Software en los PCs | 9.5d | 2021-11-17 A | 2021-11-30 | 7 | 79% | 2d | 2021-11-17 | 2021-11-19 | 2d | 0d | ProgramadorJr; AnalistaD | 152h | 120h | 4,933.12 | 733.12 | 3,895.33 |
| 9 | 1.2.4 | Preparación de los puestos de trabajo | 1d | 2021-12-01 | 2021-12-01 | 8 |  |  | 2021-11-19 | 2021-11-22 | 1d | 0d | AnalistaP; AnalistaD | 16h |  | 449.92 | 449.92 |  |
| 10 | 1.2.5 | Preparación del servidor de desarrollo | 4d | 2021-11-16 A | 2021-11-19 A | 6 | 100% |  | 2021-11-16 | 2021-11-19 | 4d |  | AnalistaW | 32h | 32h | 1,041.92 | 1,041.92 | 1,041.92 |
| 11 | 1.2.6 | Preparación del servidor de preexplotación | 1d | 2021-11-16 A | 2021-11-16 A | 6 | 100% |  | 2021-11-16 | 2021-11-16 | 1d |  | AnalistaD | 8h | 8h | 236.8 | 236.8 | 236.8 |
| 12 | 1.3 | **3.Análisis de requisistos del Sistema** | 5d | 2021-11-16 A | 2021-11-23 A |  | 100% |  | 2021-11-16 | 2021-11-23 | 5d |  |  | 48h | 48h | 1,234.72 | 1,234.72 | 1,234.72 |
| 13 | 1.3.1 | Estimación de hardware necesario | 24h | 2021-11-16 A | 2021-11-19 A | 4 | 100% |  | 2021-11-16 | 2021-11-19 | 24h |  | AnalistaP | 24h | 24h | 639.36 | 639.36 | 639.36 |
| 14 | 1.3.2 | **Validación de hardware necesario** | 2d | 2021-11-19 A | 2021-11-23 A |  | 100% |  | 2021-11-19 | 2021-11-23 | 2d |  |  | 24h | 24h | 595.36 | 595.36 | 595.36 |
| 15 | 1.3.2.1 | Parte Tecnico | 16h | 2021-11-19 A | 2021-11-23 A | 13 | 100% |  | 2021-11-19 | 2021-11-23 | 16h |  | ProgramadorJr | 16h | 16h | 259.52 | 259.52 | 259.52 |
| 16 | 1.3.2.2 | Parte Jefe de Proyecto | 8h | 2021-11-19 A | 2021-11-22 A | 13 | 100% |  | 2021-11-19 | 2021-11-22 | 8h |  | JefeA | 8h | 8h | 335.84 | 335.84 | 335.84 |
| 17 | 1.4 | **4. Diseño Preliminar** | 15.76d | 2021-12-02 | 2022-01-10 |  |  |  | 2021-11-23 | 2021-12-23 | 20.03d | 0d |  | 112h |  | 4,179.91 | 4,008.48 |  |
| 18 | 1.4.1 | Diseño de los datos y procesos | 4.57d | 2021-12-02 | 2021-12-10 | 2, 5, 12 |  |  | 2021-11-23 | 2021-12-01 | 6d | 0d | JefeA; AnalistaD | 96h |  | 3,582.82 | 3,435.84 |  |
| 19 | 1.4.2 | **Diseño del plan de pruebas** | 6.46d | 2021-12-17 | 2022-01-10 |  |  |  | 2021-12-20 | 2021-12-23 | 3.33d | 3.72d |  | 16h |  | 597.09 | 572.64 |  |
| 20 | 1.4.2.1 | Parte Datos | 0.76d | 2022-01-10 | 2022-01-10 | 18 |  |  | 2021-12-22 | 2021-12-23 | 1d | 3.72d | AnalistaD | 8h |  | 246.91 | 236.8 |  |
| 21 | 1.4.2.2 | Parte Jefe de Proyecto | 0.76d | 2021-12-17 | 2021-12-22 | 18 |  |  | 2021-12-20 | 2021-12-21 | 1d | 7.28d | JefeA | 8h |  | 350.19 | 335.84 |  |
| 22 | 1.5 | **5. Diseño Detallado** | 11.76d | 2021-12-15 | 2022-01-14 |  |  |  | 2021-12-09 | 2022-01-11 | 12.33d | 0d |  | 136h |  | 3,871.53 | 3,777.52 |  |
| 23 | 1.5.1 | Diseño gráfico de la aplcación | 3.81d | 2021-12-15 | 2021-12-21 | 18 |  |  | 2021-12-09 | 2021-12-21 | 5d | 7.95d | AnalistaW | 40h |  | 1,358.19 | 1,302.4 |  |
| 24 | 1.5.2 | **Diseño Técnico de componentes** | 9.71d | 2021-12-17 | 2022-01-14 |  |  |  | 2021-12-10 | 2022-01-11 | 11.33d | 0d |  | 96h |  | 2,513.34 | 2,475.12 |  |
| 25 | 1.5.2.1 | Presentación | 1d | 2022-01-10 | 2022-01-10 | 18 |  |  | 2021-12-21 | 2021-12-22 | 1d | 3.48d | AnalistaW | 8h |  | 260.48 | 260.48 |  |
| 26 | 1.5.2.2 | Mantenimiento de Explotación Agrícola | 2d | 2022-01-07 | 2022-01-10 | 18 |  |  | 2021-12-16 | 2021-12-20 | 2d | 3.48d | JefeA | 16h |  | 671.68 | 671.68 |  |
| 27 | 1.5.2.3 | Mantenimiento de Historial, Reservas, … | 2d | 2022-01-10 | 2022-01-11 | 18 |  |  | 2021-12-20 | 2022-01-07 | 4d | 2.48d | AnalistaP; ProgramadorJr | 32h |  | 685.76 | 685.76 |  |
| 28 | 1.5.2.4 | Localización | 2.81d | 2021-12-17 | 2022-01-14 | 18 |  |  | 2021-12-10 | 2022-01-11 | 4d | 0d | ProgramadorJr; AnalistaP | 40h |  | 895.42 | 857.2 |  |

| ID | WBS | Task | Type | Duration | Start | Finish | Predecessors | Baseline start | Baseline finish | Baseline duration | Total slack | Free slack | Resources | Work | Cost | Baseline cost |
| --- | --- | --- | --- | --- | --- | --- | --- | --- | --- | --- | --- | --- | --- | --- | --- | --- |
| 29 | 1.6 | **6. Diseño de la Base de Datos** |  | 2.67d | 2021-12-20 | 2021-12-22 |  | 2021-12-13 | 2021-12-17 | 3.5d | 2.38d |  |  | 48h | 1,725.3 | 1,668.4 |
| 30 | 1.6.1 | Diseño de las Tablas y Relaciones |  | 1.14d | 2021-12-20 | 2021-12-21 | 18 | 2021-12-13 | 2021-12-15 | 1.5d | 1.91d | 0d | AnalistaD; JefeA | 24h | 895.64 | 858.96 |
| 31 | 1.6.2 | **Validación del diseño de la BD** |  | 1.52d | 2021-12-21 | 2021-12-22 |  | 2021-12-15 | 2021-12-17 | 2d | 2.38d | 0d |  | 24h | 829.66 | 809.44 |
| 32 | 1.6.2.1 | Parte Datos |  | 1.52d | 2021-12-21 | 2021-12-22 | 30 | 2021-12-15 | 2021-12-17 | 2d | 2.38d |  | AnalistaD | 16h | 493.82 | 473.6 |
| 33 | 1.6.2.2 | Parte Jefe de Proyecto |  | 1d | 2021-12-21 | 2021-12-22 | 30 | 2021-12-15 | 2021-12-16 | 1d | 2.91d |  | JefeA | 8h | 335.84 | 335.84 |
| 34 | 1.7 | **7. Construcción** |  | 16.41d | 2021-12-07 | 2022-01-13 |  | 2021-11-29 | 2022-01-11 | 19.03d | 1.07d |  |  | 312h | 9,133.9 | 8,775.44 |
| 35 | 1.7.1 | Construcción del Prototipo |  | 1.5d | 2021-12-07 | 2021-12-09 | 18SS+5ed | 2021-11-29 | 2021-12-10 | 1.5d | 18.48d |  | ProgramadorJr; AnalistaP | 24h | 514.32 | 514.32 |
| 36 | 1.7.2 | **Construcción de la BD** |  | 5.74d | 2021-12-22 | 2022-01-13 | 31 | 2021-12-17 | 2022-01-11 | 6.83d | 1.07d |  |  | 40h | 1,012.61 | 969.92 |
| 37 | 1.7.2.1 | Parte Datos |  | 2.29d | 2021-12-22 | 2022-01-11 |  | 2021-12-17 | 2022-01-10 | 3d | 3.34d |  | AnalistaD | 24h | 740.78 | 710.4 |
| 38 | 1.7.2.2 | Parte Programador |  | 1.52d | 2021-12-23 | 2022-01-13 |  | 2022-01-07 | 2022-01-11 | 2d | 1.07d |  | ProgramadorJr | 16h | 271.83 | 259.52 |
| 39 | 1.7.3 | Codificación |  | 6.3d | 2021-12-09 | 2021-12-17 | 18FS-2ed | 2021-11-29 | 2021-12-13 | 8.2d | 0.76d | 0d | ProgramadorJr; AnalistaP; AnalistaD; AnalistaW; JefeA | 248h | 7,606.97 | 7,291.2 |
| 40 | 1.8 | **8. Pruebas** |  | 5.05d | 2021-12-17 | 2022-01-07 |  | 2021-12-13 | 2021-12-20 | 4.83d | 0.76d |  |  | 96h | 2,364.85 | 2,265.04 |
| 41 | 1.8.1 | Pruebas Unitarias |  | 1.14d | 2021-12-17 | 2021-12-21 | 39 | 2021-12-13 | 2021-12-15 | 1.5d | 0.76d | 0d | ProgramadorJr; AnalistaP | 24h | 537.21 | 514.32 |
| 42 | 1.8.2 | Pruebas de Integración |  | 0.76d | 2021-12-21 | 2021-12-22 | 41 | 2021-12-15 | 2021-12-16 | 1d | 0.76d | 0d | ProgramadorJr; AnalistaP | 16h | 358.14 | 342.88 |
| 43 | 1.8.3 | Pruebas de Sistema |  | 2.15d | 2021-12-22 | 2022-01-07 | 42 | 2021-12-16 | 2021-12-20 | 2.33d | 0.76d | 0d | ProgramadorJr; AnalistaP; AnalistaW | 56h | 1,469.51 | 1,407.84 |
| 44 | 1.9 | **9. Demostración a los usuarios** |  | 4.37d | 2022-01-07 | 2022-01-13 |  | 2021-12-20 | 2021-12-23 | 3d | 0.76d |  |  | 48h | 1,560.06 | 1,496.16 |
| 45 | 1.9.1 | Entrenamiento de usuarios |  | 14h | 2022-01-07 | 2022-01-12 | 43 | 2021-12-20 | 2021-12-22 | 16h | 0.76d | 0d | AnalistaD; AnalistaP | 32h | 938.26 | 899.84 |
| 46 | 1.9.2 | **Validación del producto por los usuarios** |  | 0.76d | 2022-01-12 | 2022-01-13 | 45 | 2021-12-22 | 2021-12-23 | 1d | 0.76d | 0d |  | 16h | 621.8 | 596.32 |
| 47 | 1.9.2.1 | Parte Jefe de Proyecto |  | 0.76d | 2022-01-12 | 2022-01-13 |  | 2021-12-22 | 2021-12-23 | 1d | 0.76d |  | JefeA | 8h | 350.19 | 335.84 |
| 48 | 1.9.2.2 | Parte Analista |  | 0.76d | 2022-01-12 | 2022-01-13 |  | 2021-12-22 | 2021-12-23 | 1d | 0.76d |  | AnalistaW | 8h | 271.61 | 260.48 |
| 49 | 1.10 | **10. Documentación** |  | 18.51d | 2021-12-01 | 2022-01-12 |  | 2021-11-25 | 2022-01-07 | 19.3d | 1.67d |  |  | 120h | 2,420.04 | 2,371.2 |
| 50 | 1.10.1 | Documentación técnica del proyecto |  | 10d | 2021-12-01 | 2021-12-17 | 39FF | 2021-11-25 | 2021-12-13 | 10d | 10.18d |  | Administrativo | 80h | 1,580.8 | 1,580.8 |
| 51 | 1.10.2 | Documentación de usuarios |  | 3.81d | 2022-01-07 | 2022-01-12 | 42FS+3ed | 2021-12-20 | 2022-01-07 | 5d | 1.67d |  | Administrativo | 40h | 839.24 | 790.4 |
| 54 | 1.11 | (HITO) Entrega del diseño de la aplicación | milestone | 0d | 2022-01-14 | 2022-01-14 | 17, 22, 29 | 2022-01-11 | 2022-01-11 | 0d | 0d |  |  |  |  |  |
| 55 | 1.12 | (HITO) Aceptación del Producto por parte del cliente | milestone | 0d | 2022-01-13 | 2022-01-13 | 46 | 2021-12-23 | 2021-12-23 | 0d | 0.76d |  |  |  |  |  |
