# Proyecto_2 (No hacer nada)

Schedule from MS Project, 2021-11-11 to 2022-01-13, costs in €, A marks actual dates.

## Calendars

- ETSI: Mon-Fri 09:00-13:00, 15:00-19:00; Sat-Sun off. Exceptions (off unless hours are given): 2021-12-06 (Día de la Constitución), 2021-12-08 (Día de la Inmaculada), 2021-12-24 to 2022-01-06 (Navidad).

## Resources

| Resource | Rate |
| --- | --- |
| JefeA | 41.98 |
| AnalistaW | 32.56 |
| AnalistaD | 29.6 |
| AnalistaP | 26.64 |
| Administrativo | 19.76 |
| ProgramadorJr | 16.22 |
| Personal Extra 1 | 29.6 |
| Perosnal Extra 2 | 41.98 |

## Schedule

| ID | WBS | Task | Duration | Start | Finish | Predecessors | Complete | Remaining | Baseline start | Baseline finish | Baseline duration | Total slack | Free slack | Resources | Work | Actual work | Cost | Baseline cost | Actual cost |
| --- | --- | --- | --- | --- | --- | --- | --- | --- | --- | --- | --- | --- | --- | --- | --- | --- | --- | --- | --- |
| 1 | 1 | **TODO EL PROYECTO** | 33.27d | 2021-11-11 A | 2022-01-13 |  | 29% | 23.59d | 2021-11-11 | 2022-01-11 | 31.03d | 0d |  |  | 1232.01h | 312h | 37,602.13 | 31,570.96 | 9,921.01 |
| 2 | 1.1 | **1. Requerimientos de los usuarios** | 3.5d | 2021-11-11 A | 2021-11-16 A |  | 100% |  | 2021-11-11 | 2021-11-16 | 3.5d |  |  |  | 48h | 48h | 1,826.64 | 1,826.64 | 1,826.64 |
| 3 | 1.1.1 | Toma de requisistos de usuario | 2.5d | 2021-11-11 A | 2021-11-15 A |  | 100% |  | 2021-11-11 | 2021-11-15 | 2.5d |  |  | JefeA; AnalistaW | 40h | 40h | 1,490.8 | 1,490.8 | 1,490.8 |
| 4 | 1.1.2 | Validación de los requisitos | 1d | 2021-11-15 A | 2021-11-16 A | 3 | 100% |  | 2021-11-15 | 2021-11-16 | 1d |  |  | JefeA | 8h | 8h | 335.84 | 335.84 | 335.84 |
| 5 | 1.2 | **2. Análisis de requisitos de Software** | 15d | 2021-11-11 A | 2021-12-01 |  | 85% | 2.31d | 2021-11-11 | 2021-11-22 | 7.5d | 0d |  |  | 264h | 216h | 8,347.36 | 4,147.36 | 6,859.65 |
| 6 | 1.2.1 | Estudio de los requisitos | 3d | 2021-11-11 A | 2021-11-15 A |  | 100% |  | 2021-11-11 | 2021-11-15 | 3d |  |  | AnalistaD; AnalistaP | 48h | 48h | 1,349.76 | 1,349.76 | 1,349.76 |
| 7 | 1.2.2 | Validación de los requisitos | 1d | 2021-11-16 A | 2021-11-17 A | 6 | 100% |  | 2021-11-16 | 2021-11-17 | 1d |  |  | JefeA | 8h | 8h | 335.84 | 335.84 | 335.84 |
| 8 | 1.2.3 | Instalación del Software en los PCs | 9.5d | 2021-11-17 A | 2021-11-30 | 7 | 79% | 2d | 2021-11-17 | 2021-11-19 | 2d | 0d |  | ProgramadorJr; AnalistaD | 152h | 120h | 4,933.12 | 733.12 | 3,895.33 |
| 9 | 1.2.4 | Preparación de los puestos de trabajo | 1d | 2021-12-01 | 2021-12-01 | 8 |  |  | 2021-11-19 | 2021-11-22 | 1d | 0d |  | AnalistaP; AnalistaD | 16h |  | 449.92 | 449.92 |  |
| 10 | 1.2.5 | Preparación del servidor de desarrollo | 4d | 2021-11-16 A | 2021-11-19 A | 6 | 100% |  | 2021-11-16 | 2021-11-19 | 4d |  |  | AnalistaW | 32h | 32h | 1,041.92 | 1,041.92 | 1,041.92 |
| 11 | 1.2.6 | Preparación del servidor de preexplotación | 1d | 2021-11-16 A | 2021-11-16 A | 6 | 100% |  | 2021-11-16 | 2021-11-16 | 1d |  |  | AnalistaD | 8h | 8h | 236.8 | 236.8 | 236.8 |
| 12 | 1.3 | **3.Análisis de requisistos del Sistema** | 5d | 2021-11-16 A | 2021-11-23 A |  | 100% |  | 2021-11-16 | 2021-11-23 | 5d |  |  |  | 48h | 48h | 1,234.72 | 1,234.72 | 1,234.72 |
| 13 | 1.3.1 | Estimación de hardware necesario | 24h | 2021-11-16 A | 2021-11-19 A | 4 | 100% |  | 2021-11-16 | 2021-11-19 | 24h |  |  | AnalistaP | 24h | 24h | 639.36 | 639.36 | 639.36 |
| 14 | 1.3.2 | **Validación de hardware necesario** | 2d | 2021-11-19 A | 2021-11-23 A |  | 100% |  | 2021-11-19 | 2021-11-23 | 2d |  |  |  | 24h | 24h | 595.36 | 595.36 | 595.36 |
| 15 | 1.3.2.1 | Parte Tecnico | 16h | 2021-11-19 A | 2021-11-23 A | 13 | 100% |  | 2021-11-19 | 2021-11-23 | 16h |  |  | ProgramadorJr | 16h | 16h | 259.52 | 259.52 | 259.52 |
| 16 | 1.3.2.2 | Parte Jefe de Proyecto | 8h | 2021-11-19 A | 2021-11-22 A | 13 | 100% |  | 2021-11-19 | 2021-11-22 | 8h |  |  | JefeA | 8h | 8h | 335.84 | 335.84 | 335.84 |
| 17 | 1.4 | **4. Diseño Preliminar** | 13.5d | 2021-12-02 | 2021-12-23 |  |  |  | 2021-11-23 | 2021-12-23 | 20.03d | 0d |  |  | 112h |  | 4,008.48 | 4,008.48 |  |
| 18 | 1.4.1 | Diseño de los datos y procesos | 3d | 2021-12-02 | 2021-12-07 | 2, 5, 12 |  |  | 2021-11-23 | 2021-12-01 | 6d | 0d |  | JefeA; AnalistaD; Personal Extra 1; Perosnal Extra 2 | 96h |  | 3,435.84 | 3,435.84 |  |
| 19 | 1.4.2 | **Diseño del plan de pruebas** | 3.88d | 2021-12-17 | 2021-12-23 |  |  |  | 2021-12-20 | 2021-12-23 | 3.33d | 4.77d |  |  | 16h |  | 572.64 | 572.64 |  |
| 20 | 1.4.2.1 | Parte Datos | 1d | 2021-12-20 | 2021-12-21 | 18 |  |  | 2021-12-22 | 2021-12-23 | 1d | 6.44d |  | AnalistaD | 8h |  | 236.8 | 236.8 |  |
| 21 | 1.4.2.2 | Parte Jefe de Proyecto | 1d | 2021-12-17 | 2021-12-23 | 18 |  |  | 2021-12-20 | 2021-12-21 | 1d | 4.77d |  | JefeA; Perosnal Extra 2 | 8h |  | 335.84 | 335.84 |  |
| 22 | 1.5 | **5. Diseño Detallado** | 9.05d | 2021-12-14 | 2022-01-10 |  |  |  | 2021-12-09 | 2022-01-11 | 12.33d | 3.1d | 0d |  | 136.01h |  | 4,449.57 | 3,777.52 |  |
| 23 | 1.5.1 | Diseño gráfico de la aplcación | 5d | 2021-12-14 | 2021-12-22 | 18 |  |  | 2021-12-09 | 2021-12-21 | 5d | 5.4d |  | AnalistaW | 40h |  | 1,302.4 | 1,302.4 |  |
| 24 | 1.5.2 | **Diseño Técnico de componentes** | 8.05d | 2021-12-15 | 2022-01-10 |  |  |  | 2021-12-10 | 2022-01-11 | 11.33d | 3.1d |  |  | 96.01h |  | 3,147.17 | 2,475.12 |  |
| 25 | 1.5.2.1 | Presentación | 1d | 2021-12-22 | 2021-12-23 | 18 |  |  | 2021-12-21 | 2021-12-22 | 1d | 4.4d |  | AnalistaW | 8h |  | 260.48 | 260.48 |  |
| 26 | 1.5.2.2 | Mantenimiento de Explotación Agrícola | 2d | 2021-12-20 | 2021-12-22 | 18 |  |  | 2021-12-16 | 2021-12-20 | 2d | 6.15d |  | JefeA | 16h |  | 671.68 | 671.68 |  |
| 27 | 1.5.2.3 | Mantenimiento de Historial, Reservas, … | 2.92d | 2021-12-15 | 2022-01-10 | 18 |  |  | 2021-12-20 | 2022-01-07 | 4d | 3.1d |  | AnalistaP; ProgramadorJr; Perosnal Extra 2; Personal Extra 1 | 32h |  | 961.21 | 685.76 |  |
| 28 | 1.5.2.4 | Localización | 3.41d | 2021-12-15 | 2021-12-22 | 18 |  |  | 2021-12-10 | 2022-01-11 | 4d | 6.27d |  | ProgramadorJr; AnalistaP; Personal Extra 1; Perosnal Extra 2; AnalistaD | 40.01h |  | 1,253.79 | 857.2 |  |

| ID | WBS | Task | Type | Duration | Start | Finish | Predecessors | Baseline start | Baseline finish | Baseline duration | Total slack | Free slack | Resources | Work | Cost | Baseline cost |
| --- | --- | --- | --- | --- | --- | --- | --- | --- | --- | --- | --- | --- | --- | --- | --- | --- |
| 29 | 1.6 | **6. Diseño de la Base de Datos** |  | 5.88d | 2021-12-15 | 2021-12-23 |  | 2021-12-13 | 2021-12-17 | 3.5d | 3.19d | 2.17d |  | 48h | 1,767.44 | 1,668.4 |
| 30 | 1.6.1 | Diseño de las Tablas y Relaciones |  | 1.5d | 2021-12-15 | 2021-12-16 | 18 | 2021-12-13 | 2021-12-15 | 1.5d | 3.19d | 0d | AnalistaD; JefeA | 24h | 858.96 | 858.96 |
| 31 | 1.6.2 | **Validación del diseño de la BD** |  | 4.38d | 2021-12-16 | 2021-12-23 |  | 2021-12-15 | 2021-12-17 | 2d | 3.19d | 0d |  | 24h | 908.48 | 809.44 |
| 32 | 1.6.2.1 | Parte Datos |  | 2d | 2021-12-16 | 2021-12-23 | 30 | 2021-12-15 | 2021-12-17 | 2d | 3.19d |  | AnalistaD; Personal Extra 1; Perosnal Extra 2 | 16h | 572.64 | 473.6 |
| 33 | 1.6.2.2 | Parte Jefe de Proyecto |  | 1d | 2021-12-16 | 2021-12-17 | 30 | 2021-12-15 | 2021-12-16 | 1d | 6.57d |  | JefeA | 8h | 335.84 | 335.84 |
| 34 | 1.7 | **7. Construcción** |  | 13.09d | 2021-12-07 | 2022-01-10 |  | 2021-11-29 | 2022-01-11 | 19.03d | 0d |  |  | 312h | 9,660.2 | 8,775.44 |
| 35 | 1.7.1 | Construcción del Prototipo |  | 2d | 2021-12-14 | 2021-12-17 | 18SS+5ed | 2021-11-29 | 2021-12-10 | 1.5d | 8.67d |  | ProgramadorJr; AnalistaP; Perosnal Extra 2 | 24h | 678.72 | 514.32 |
| 36 | 1.7.2 | **Construcción de la BD** |  | 2.08d | 2021-12-23 | 2022-01-10 | 31 | 2021-12-17 | 2022-01-11 | 6.83d | 3.19d |  |  | 40h | 1,118.48 | 969.92 |
| 37 | 1.7.2.1 | Parte Datos |  | 2.08d | 2021-12-23 | 2022-01-10 |  | 2021-12-17 | 2022-01-10 | 3d | 3.19d |  | AnalistaD; Personal Extra 1; Perosnal Extra 2 | 24h | 858.96 | 710.4 |
| 38 | 1.7.2.2 | Parte Programador |  | 2d | 2021-12-23 | 2022-01-10 |  | 2022-01-07 | 2022-01-11 | 2d | 3.27d |  | ProgramadorJr | 16h | 259.52 | 259.52 |
| 39 | 1.7.3 | Codificación |  | 6.61d | 2021-12-07 | 2021-12-16 | 18FS-2ed | 2021-11-29 | 2021-12-13 | 8.2d | 0d |  | ProgramadorJr; AnalistaP; AnalistaD; AnalistaW; JefeA; Personal Extra 1; Perosnal Extra 2 | 248h | 7,863 | 7,291.2 |
| 40 | 1.8 | **8. Pruebas** |  | 4.94d | 2021-12-16 | 2021-12-23 |  | 2021-12-13 | 2021-12-20 | 4.83d | 0d |  |  | 96h | 2,436.41 | 2,265.04 |
| 41 | 1.8.1 | Pruebas Unitarias |  | 1d | 2021-12-16 | 2021-12-17 | 39 | 2021-12-13 | 2021-12-15 | 1.5d | 0d |  | ProgramadorJr; AnalistaP; Personal Extra 1 | 24h | 579.68 | 514.32 |
| 42 | 1.8.2 | Pruebas de Integración |  | 0.67d | 2021-12-17 | 2021-12-20 | 41 | 2021-12-15 | 2021-12-16 | 1d | 0d |  | ProgramadorJr; AnalistaP; Personal Extra 1 | 16h | 386.45 | 342.88 |
| 43 | 1.8.3 | Pruebas de Sistema |  | 3.27d | 2021-12-20 | 2021-12-23 | 42 | 2021-12-16 | 2021-12-20 | 2.33d | 1.38d | 0d | ProgramadorJr; AnalistaP; AnalistaW; Personal Extra 1 | 56h | 1,470.28 | 1,407.84 |
| 44 | 1.9 | **9. Demostración a los usuarios** |  | 3.35d | 2021-12-23 | 2022-01-11 |  | 2021-12-20 | 2021-12-23 | 3d | 1.38d |  |  | 48h | 1,500.11 | 1,496.16 |
| 45 | 1.9.1 | Entrenamiento de usuarios |  | 18.81h | 2021-12-23 | 2022-01-10 | 43 | 2021-12-20 | 2021-12-22 | 16h | 1.38d | 0d | AnalistaD; AnalistaP; Personal Extra 1 | 32h | 915.63 | 899.84 |
| 46 | 1.9.2 | **Validación del producto por los usuarios** |  | 1d | 2022-01-10 | 2022-01-11 | 45 | 2021-12-22 | 2021-12-23 | 1d | 1.38d | 0d |  | 16h | 584.48 | 596.32 |
| 47 | 1.9.2.1 | Parte Jefe de Proyecto |  | 1d | 2022-01-10 | 2022-01-11 |  | 2021-12-22 | 2021-12-23 | 1d | 1.38d |  | JefeA | 8h | 335.84 | 335.84 |
| 48 | 1.9.2.2 | Parte Analista |  | 0.5d | 2022-01-10 | 2022-01-11 |  | 2021-12-22 | 2021-12-23 | 1d | 1.88d |  | AnalistaW; Personal Extra 1 | 8h | 248.64 | 260.48 |
| 49 | 1.10 | **10. Documentación** |  | 19.67d | 2021-11-30 | 2022-01-13 |  | 2021-11-25 | 2022-01-07 | 19.3d | 0d |  |  | 120h | 2,371.2 | 2,371.2 |
| 50 | 1.10.1 | Documentación técnica del proyecto |  | 10d | 2021-11-30 | 2021-12-16 | 39FF | 2021-11-25 | 2021-12-13 | 10d | 9.67d |  | Administrativo | 80h | 1,580.8 | 1,580.8 |
| 51 | 1.10.2 | Documentación de usuarios |  | 5d | 2021-12-23 | 2022-01-13 | 42FS+3ed | 2021-12-20 | 2022-01-07 | 5d | 0d |  | Administrativo | 40h | 790.4 | 790.4 |
| 54 | 1.11 | (HITO) Entrega del diseño de la aplicación | milestone | 0d | 2022-01-10 | 2022-01-10 | 17, 22, 29 | 2022-01-11 | 2022-01-11 | 0d | 3.1d |  |  |  |  |  |
| 55 | 1.12 | (HITO) Aceptación del Producto por parte del cliente | milestone | 0d | 2022-01-11 | 2022-01-11 | 46 | 2021-12-23 | 2021-12-23 | 0d | 1.38d |  |  |  |  |  |
